# Casos Uso

Schedule from MS Project, 2010-05-06 to 2010-08-03, costs in $.
Hexacta

## Calendars

- Standard: Mon-Fri 08:00-12:00, 13:00-17:00; Sat-Sun off.

## Resources

| Resource | Rate |
| --- | --- |
| Programador Jr 1 | 18.75 |
| Programador Jr 2 | 18.75 |
| Programador Sr 1 | 31.25 |
| Programador Sr 2 | 31.25 |
| Tester | 18.75 |
| IT 1 | 25 |
| Arquitecto | 43.75 |

## Schedule

| ID | WBS | Task | Duration | Start | Finish | Predecessors | Total slack | Free slack | Constraint | Resources | Work | Cost |
| --- | --- | --- | --- | --- | --- | --- | --- | --- | --- | --- | --- | --- |
| 1 | 1 | Integracion con el Sistema STARS (Lectura Datos) | 5d | 2010-06-30 | 2010-07-06 | 200 | 2d | 0d |  | Programador Sr 1 | 40h | 1,250 |
| 2 | 2 | Modulo Seguridad que Oculta Info Llamado | 3d | 2010-07-07 | 2010-07-09 | 1 | 17d |  |  | Programador Sr 2 | 24h | 750 |
| 3 | 3 | **(GEN01) Identificacion y Autenticacion** | 3d | 2010-07-07 | 2010-07-09 | 1 | 11d | 0d |  |  |  |  |
| 4 | 3.1 | Autenticacion | 1d | 2010-07-07 | 2010-07-07 |  | 13d |  |  |  |  |  |
| 5 | 3.2 | Interfaz Inicio Sesion | 3d | 2010-07-07 | 2010-07-09 |  | 11d |  |  |  |  |  |
| 6 | 4 | **(GEN02) Gestion General de Registros** | 10d | 2010-07-07 | 2010-07-20 | 1 | 10d |  |  | Programador Jr 1; Programador Jr 2 | 256h | 4,800 |
| 7 | 4.1 | ABM Registro | 1d | 2010-07-19 | 2010-07-19 |  | 11d |  |  | Programador Jr 1; Programador Jr 2 | 16h | 300 |
| 8 | 4.2 | Buscar registro | 1d | 2010-07-19 | 2010-07-19 |  | 11d |  |  | Programador Jr 1; Programador Jr 2 | 16h | 300 |
| 9 | 4.3 | Copiar registro | 1d | 2010-07-20 | 2010-07-20 |  | 10d |  |  | Programador Jr 1; Programador Jr 2 | 16h | 300 |
| 10 | 4.4 | Interfaz ABM Registro | 3d | 2010-07-07 | 2010-07-09 |  | 17d |  |  | Programador Jr 1; Programador Jr 2 | 48h | 900 |
| 11 | 5 | **(USR01) Determinacion del servicio de atencion** | 2d | 2010-07-13 | 2010-07-14 | 74, 31 | 7d |  |  |  |  |  |
| 12 | 5.1 | Capturar la Comunicación???? | 2d | 2010-07-13 | 2010-07-14 |  | 7d |  |  |  |  |  |
| 13 | 5.2 | Determinar el tipo de servicio | 1d | 2010-07-13 | 2010-07-13 |  | 8d |  |  |  |  |  |
| 14 | 5.3 | Lista de Espera | 1d | 2010-07-13 | 2010-07-13 |  | 8d |  |  |  |  |  |
| 15 | 5.4 | Determinar conjunto de operadores adecuados al tipo de solicitud | 1d | 2010-07-13 | 2010-07-13 |  | 8d |  |  |  |  |  |
| 16 | 6 | **(USR02) Agenda** | 4d | 2010-07-12 | 2010-07-15 | 3, 71 | 10d | 0d |  | Programador Jr 1; Programador Jr 2 | 176h | 3,900 |
| 17 | 6.1 | Selección de una agenda | 0.5d | 2010-07-15 | 2010-07-15 |  | 10d |  |  | Programador Jr 1; Programador Jr 2 | 8h | 150 |
| 18 | 6.2 | ABM citas sobre la agenda | 1d | 2010-07-13 | 2010-07-13 |  | 12d |  | start no earlier than 2010-06-16 | Programador Jr 1; Programador Jr 2 | 16h | 300 |
| 19 | 6.3 | Interfaz de la Agenda | 2d | 2010-07-12 | 2010-07-15 |  | 10.5d |  |  | Programador Jr 1; Programador Jr 2 | 32h | 600 |
| 20 | 6.4 | Integracion con Stars - Llamada desde Agenda | 3d | 2010-07-13 | 2010-07-15 |  | 10d |  |  | Programador Sr 2; Programador Sr 1 | 48h | 1,500 |
| 21 | 6.5 | Asignar pacientes a cita | 0.5d | 2010-07-12 | 2010-07-12 |  | 13.5d |  |  | Programador Jr 1; Programador Jr 2 | 8h | 150 |
| 22 | 7 | (USR03) Rellamada | 1d | 2010-07-21 | 2010-07-21 | 31, 56 | 9d |  |  | Programador Jr 1; Programador Jr 2 | 16h | 300 |
| 23 | 8 | **(USR04) Consulta** | 2d | 2010-07-07 | 2010-07-08 | 1 | 7d | 0d |  |  |  |  |
| 24 | 8.1 | **Tratar Consulta** | 0.5d | 2010-07-07 | 2010-07-07 |  | 8.5d |  |  |  |  |  |
| 25 | 8.1.1 | Ajornar Consulta | 0.5d | 2010-07-07 | 2010-07-07 |  | 8.5d |  |  |  |  |  |
| 26 | 8.1.2 | Transferir consulta | 0.5d | 2010-07-07 | 2010-07-07 |  | 8.5d |  |  |  |  |  |
| 27 | 8.2 | Modulo Envio de Correo | 2d | 2010-07-07 | 2010-07-08 |  | 7d |  |  |  |  |  |
| 28 | 8.3 | Modulo Envio SMS | 2d | 2010-07-07 | 2010-07-08 |  | 7d |  |  |  |  |  |
| 29 | 8.4 | Inclusion en Campaña de Seguimiento | 1d | 2010-07-07 | 2010-07-07 |  | 8d |  |  |  |  |  |
| 30 | 9 | (USR05) Consejo Salud | 1d | 2010-07-13 | 2010-07-13 | 61, 67 | 15d |  |  |  |  |  |

| ID | WBS | Task | Duration | Start | Finish | Predecessors | Total slack | Free slack | Resources | Work | Cost |
| --- | --- | --- | --- | --- | --- | --- | --- | --- | --- | --- | --- |
| 31 | 10 | **(USR06) Gestionar Consulta pendiente** | 1d | 2010-07-09 | 2010-07-09 | 23 | 8d | 1d |  |  |  |
| 32 | 10.1 | Priorizacion de la Lista de Consultas | 1d | 2010-07-09 | 2010-07-09 |  | 8d |  |  |  |  |
| 33 | 11 | **(USR07) Programacion de cita previa** | 1d | 2010-07-13 | 2010-07-13 | 67, 74 | 15d |  |  |  |  |
| 34 | 11.1 | Realizar Citación (Interface con Sistema de citación AP) | 1d | 2010-07-13 | 2010-07-13 |  | 15d |  |  |  |  |
| 35 | 12 | **(USR08) Gestiones sobre la TSI** | 0.5d | 2010-07-13 | 2010-07-13 | 74, 67, 23, 1 | 10.5d | 8.5d |  |  |  |
| 36 | 12.1 | Verificacion Documentacion Necesaria | 0.5d | 2010-07-13 | 2010-07-13 |  | 10.5d |  |  |  |  |
| 37 | 12.2 | Enviar Gestion (Interface con sistema RCA) | 0.5d | 2010-07-13 | 2010-07-13 |  | 10.5d |  |  |  |  |
| 38 | 12.3 | Cierre automatico de la consulta por paso de tiempo | 0.5d | 2010-07-13 | 2010-07-13 |  | 10.5d |  |  |  |  |
| 39 | 12.4 | Guardar LOG gestion TSI????? | 0.5d | 2010-07-13 | 2010-07-13 |  | 10.5d |  |  |  |  |
| 40 | 13 | **(USR09) Servicio de traduccion** | 2d | 2010-07-12 | 2010-07-13 | 67 | 15d |  |  |  |  |
| 41 | 13.1 | Contactar Servicio Externo de Traduccion | 1d | 2010-07-12 | 2010-07-12 |  | 16d |  |  |  |  |
| 42 | 13.2 | Enlace Comunicacion Multiconferencia | 2d | 2010-07-12 | 2010-07-13 |  | 15d |  |  |  |  |
| 43 | 13.3 | Modulo monitorización de servicio | 2d | 2010-07-12 | 2010-07-13 |  | 15d |  |  |  |  |
| 44 | 14 | **(USR10) Informacion Sanitaria General** | 1d | 2010-07-28 | 2010-07-28 | 67, 74, 170 | 4d |  |  |  |  |
| 45 | 14.1 | Guardar Informacion Ciudadano | 1d | 2010-07-28 | 2010-07-28 |  | 4d |  |  |  |  |
| 46 | 15 | **(USR11) Seguimiento de Patologias** | 1d | 2010-07-16 | 2010-07-16 | 16, 31 | 10d | 0d |  |  |  |
| 47 | 15.1 | Buscar Campañas Abiertas | 0.5d | 2010-07-16 | 2010-07-16 |  | 10.5d |  |  |  |  |
| 48 | 15.2 | **Gestionar Seguimiento** | 0.5d | 2010-07-16 | 2010-07-16 |  | 10.5d |  |  |  |  |
| 49 | 15.2.1 | Visualizar Historial Pacientes | 0.5d | 2010-07-16 | 2010-07-16 |  | 10.5d |  |  |  |  |
| 50 | 15.2.2 | Llamada al Paciente | 0.5d | 2010-07-16 | 2010-07-16 |  | 10.5d |  |  |  |  |
| 51 | 15.3 | Desligar paciente de campaña | 1d | 2010-07-16 | 2010-07-16 |  | 10d |  |  |  |  |
| 52 | 16 | **(USR12) Encuestas** | 3d | 2010-07-01 | 2010-07-05 | 130 | 19d | 1d |  | 16h | 300 |
| 53 | 16.1 | Interfaz de Encuestas | 3d | 2010-07-01 | 2010-07-05 |  | 19d |  |  |  |  |
| 54 | 16.2 | Contacto con Encuestado | 1d | 2010-07-01 | 2010-07-01 |  | 21d |  |  |  |  |
| 55 | 16.3 | ABM Formulario De Encuesta | 1d | 2010-07-05 | 2010-07-05 |  | 19d |  | Programador Jr 1; Programador Jr 2 | 16h | 300 |

| ID | WBS | Task | Duration | Start | Finish | Predecessors | Total slack | Free slack | Resources | Work | Cost |
| --- | --- | --- | --- | --- | --- | --- | --- | --- | --- | --- | --- |
| 56 | 17 | **(USR13) Buscar Consultas** | 1d | 2010-07-12 | 2010-07-12 | 71 | 9d | 0d |  |  |  |
| 57 | 17.1 | **Operativo de Busqueda** | 1d | 2010-07-12 | 2010-07-12 |  | 9d |  |  |  |  |
| 58 | 17.1.1 | Buscar según distintos criterios | 1d | 2010-07-12 | 2010-07-12 |  | 9d |  |  |  |  |
| 59 | 17.1.2 | Filtrar resultados de la busqueda según permisos del usuario | 0.5d | 2010-07-12 | 2010-07-12 |  | 9.5d |  |  |  |  |
| 60 | 17.1.3 | Acotar resultados si los mismos sobrepasan el parametro configurable "n" | 0.5d | 2010-07-12 | 2010-07-12 |  | 9.5d |  |  |  |  |
| 61 | 18 | **(USR14) Hacer Uso de Documentos** | 2d | 2010-07-09 | 2010-07-12 | 23 | 8d | 0d |  |  |  |
| 62 | 18.1 | Creación y uso de Guias Interrogatorio | 2d | 2010-07-09 | 2010-07-12 |  | 8d |  |  |  |  |
| 63 | 18.2 | Creación y uso Fichas Tematicas | 2d | 2010-07-09 | 2010-07-12 |  | 8d |  |  |  |  |
| 64 | 18.3 | Creación y uso de Recursos | 2d | 2010-07-09 | 2010-07-12 |  | 8d |  |  |  |  |
| 65 | 18.4 | Búsqueda y selección de documentos | 2d | 2010-07-09 | 2010-07-12 |  | 8d |  |  |  |  |
| 66 | 18.5 | Apertura documentos | 1d | 2010-07-09 | 2010-07-09 |  | 9d |  |  |  |  |
| 67 | 19 | **(USR15) Cerrar consulta y dar respuesta al ciudadano** | 1d | 2010-07-09 | 2010-07-09 | 23 | 11.5d | 0d |  |  |  |
| 68 | 19.1 | Clasificar Finalizacion de Consulta | 0.5d | 2010-07-09 | 2010-07-09 |  | 12d |  |  |  |  |
| 69 | 19.2 | Adición de motivo de cierre a la consulta | 0.5d | 2010-07-09 | 2010-07-09 |  | 12d |  |  |  |  |
| 70 | 19.3 | Creación de clasificaciones ad-hoc | 1d | 2010-07-09 | 2010-07-09 |  | 11.5d |  |  |  |  |
| 71 | 20 | **(USR16) Visualizar Consulta** | 1d | 2010-07-09 | 2010-07-09 | 23 | 9d | 0d |  |  |  |
| 72 | 20.1 | Mostrar datos generales de la consulta | 1d | 2010-07-09 | 2010-07-09 |  | 9d |  |  |  |  |
| 73 | 20.2 | Mostrar datos según el documento elegido | 1d | 2010-07-09 | 2010-07-09 |  | 9d |  |  |  |  |
| 74 | 21 | **(USR17) Crear/Transferir Consulta** | 2d | 2010-07-09 | 2010-07-12 | 23 | 7d | 0d |  |  |  |
| 75 | 21.1 | Crear Consulta | 2d | 2010-07-09 | 2010-07-12 |  | 7d |  |  |  |  |
| 76 | 21.2 | Copiar consulta | 1d | 2010-07-09 | 2010-07-09 |  | 8d |  |  |  |  |
| 77 | 21.3 | **Transferir Consulta** | 1d | 2010-07-09 | 2010-07-09 |  | 8d |  |  |  |  |
| 78 | 21.3.1 | Localizar a otro operador del mismo perfil | 1d | 2010-07-09 | 2010-07-09 |  | 8d |  |  |  |  |
| 79 | 22 | **(ADM01) Mantenimiento del Entorno, clasif y prioridades** | 18d | 2010-06-30 | 2010-07-23 | 200 | 0d |  |  | 128h | 3,000 |
| 80 | 22.1 | Módulo de edición de parametros grales de la aplicación | 6d | 2010-06-30 | 2010-07-23 |  | 0d |  | Programador Sr 1; Programador Sr 2 | 48h | 1,500 |
| 81 | 22.2 | Módulo edición listas de clasificaciones (Códigos internos) | 3d | 2010-06-30 | 2010-07-02 |  | 15d |  |  |  |  |

| ID | WBS | Task | Duration | Start | Finish | Predecessors | Total slack | Free slack | Resources | Work | Cost |
| --- | --- | --- | --- | --- | --- | --- | --- | --- | --- | --- | --- |
| 82 | 22.3 | **Módulo mantenimiento de la lista de espera** | 4d | 2010-06-30 | 2010-07-05 |  | 14d |  |  | 16h | 300 |
| 83 | 22.3.1 | ABM de la lista de espera | 1d | 2010-07-05 | 2010-07-05 |  | 14d |  | Programador Jr 1; Programador Jr 2 | 16h | 300 |
| 84 | 22.3.2 | Módulo de gestión de prioridades sobre la lista de espera | 1d | 2010-06-30 | 2010-06-30 |  | 17d |  |  |  |  |
| 85 | 22.4 | **Módulo mantenimiento de lineas de servicio** | 5d | 2010-06-30 | 2010-07-06 |  | 13d |  |  | 32h | 600 |
| 86 | 22.4.1 | ABM lineas de servicio | 1d | 2010-07-06 | 2010-07-06 |  | 13d |  | Programador Jr 1; Programador Jr 2 | 16h | 300 |
| 87 | 22.4.2 | ABM servicios para una linea seleccionada | 1d | 2010-06-30 | 2010-06-30 |  | 17d |  | Programador Jr 1; Programador Jr 2 | 16h | 300 |
| 88 | 22.5 | **Módulo mantenimiento agendas** | 17d | 2010-06-30 | 2010-07-22 |  | 1d |  |  | 32h | 600 |
| 89 | 22.5.1 | Asignar operadores a agenda | 1d | 2010-06-30 | 2010-06-30 |  | 17d |  |  |  |  |
| 90 | 22.5.2 | ABM de usuarios de la agenda | 1d | 2010-07-22 | 2010-07-22 |  | 1d |  | Programador Jr 1; Programador Jr 2 | 16h | 300 |
| 91 | 22.5.3 | ABM citas de la agenda | 1d | 2010-06-30 | 2010-06-30 |  | 17d |  | Programador Jr 1; Programador Jr 2 | 16h | 300 |
| 92 | 22.6 | **Módulo mantenimiento BBDD** | 2d | 2010-06-30 | 2010-07-01 |  | 16d |  |  |  |  |
| 93 | 22.6.1 | Módulo comprobación de formato de archivo | 1d | 2010-06-30 | 2010-06-30 |  | 17d |  |  |  |  |
| 94 | 22.6.2 | Módulo actualización de BBDD | 2d | 2010-06-30 | 2010-07-01 |  | 16d |  |  |  |  |
| 95 | 23 | **(ADM02) Extraccion de estadisticas y listados** | 2d | 2010-07-26 | 2010-07-27 | 79 | 0d |  | Programador Jr 1; Programador Jr 2 | 64h | 1,200 |
| 96 | 23.1 | Listados De Administración | 2d | 2010-07-26 | 2010-07-27 |  | 0d |  | Programador Jr 1; Programador Jr 2 | 32h | 600 |
| 97 | 23.2 | **Listados Comunes** | 1d | 2010-07-26 | 2010-07-26 |  | 1d |  |  |  |  |
| 98 | 23.2.1 | Detalle de estado de finalización consulta/acción | 1d | 2010-07-26 | 2010-07-26 |  | 1d |  |  |  |  |
| 99 | 23.2.2 | Listado de clasificaciones | 1d | 2010-07-26 | 2010-07-26 |  | 1d |  |  |  |  |
| 100 | 23.2.3 | Listados de incidencias en las comunicaciones | 1d | 2010-07-26 | 2010-07-26 |  | 1d |  |  |  |  |
| 101 | 23.2.4 | Ratios por usuario | 1d | 2010-07-26 | 2010-07-26 |  | 1d |  |  |  |  |
| 102 | 23.2.5 | Finales de servicio | 1d | 2010-07-26 | 2010-07-26 |  | 1d |  |  |  |  |
| 103 | 24 | **(ADM03) Mantenimiento de documentos** | 4d | 2010-07-16 | 2010-07-21 | 111 | 8d | 0d |  |  |  |
| 104 | 24.1 | Creación y edición de documentos | 2d | 2010-07-20 | 2010-07-21 | 108, 109, 110 | 8d |  |  |  |  |
| 105 | 24.2 | Borrado de documentos | 1d | 2010-07-16 | 2010-07-16 |  | 11d |  |  |  |  |
| 106 | 24.3 | Clasificación de documentos | 1d | 2010-07-16 | 2010-07-16 |  | 11d |  |  |  |  |
| 107 | 24.4 | Búsqueda de documentos | 2d | 2010-07-16 | 2010-07-19 |  | 10d |  |  |  |  |
| 108 | 25 | (ADM04) Mantenimiento de Recursos | 2d | 2010-07-13 | 2010-07-14 | 61 | 8d | 0d |  |  |  |
| 109 | 26 | (ADM05) Mantenimiento de guias de interrogatorio | 2d | 2010-07-16 | 2010-07-19 | 111, 61 | 8d | 0d |  |  |  |
| 110 | 27 | (ADM06) Mantenimiento de Fichas tematicas | 2d | 2010-07-16 | 2010-07-19 | 111, 61 | 8d | 0d |  |  |  |

| ID | WBS | Task | Duration | Start | Finish | Predecessors | Total slack | Free slack |
| --- | --- | --- | --- | --- | --- | --- | --- | --- |
| 111 | 28 | **(ADM07) Mantenimiento de relaciones sobre guias de interrogatorio y fichas tematicas** | 1d | 2010-07-15 | 2010-07-15 | 108 | 8d | 0d |
| 112 | 28.1 | Adición de documentos a fichas temáticas | 1d | 2010-07-15 | 2010-07-15 |  | 8d |  |
| 113 | 28.2 | Adición de documentos a guias de interrogatorio | 1d | 2010-07-15 | 2010-07-15 |  | 8d |  |
| 114 | 29 | **(ADM08) Mantenimiento de encuestas** | 1d | 2010-07-01 | 2010-07-01 | 130 | 23d |  |
| 115 | 29.1 | **Mantenimiento Indice de Encuestas** | 1d | 2010-07-01 | 2010-07-01 |  | 23d |  |
| 116 | 29.1.1 | Mantener Ediciones | 1d | 2010-07-01 | 2010-07-01 |  | 23d |  |
| 117 | 29.1.2 | Cierre de ediciones | 1d | 2010-07-01 | 2010-07-01 |  | 23d |  |
| 118 | 29.2 | Asignación de formulario a encuesta | 1d | 2010-07-01 | 2010-07-01 |  | 23d |  |
| 119 | 29.3 | Asignación de operadores a encuesta | 1d | 2010-07-01 | 2010-07-01 |  | 23d |  |
| 120 | 29.4 | **Asignación lista de encuestados** | 1d | 2010-07-01 | 2010-07-01 |  | 23d |  |
| 121 | 29.4.1 | Alta, baja de encuestados | 1d | 2010-07-01 | 2010-07-01 |  | 23d |  |
| 122 | 29.4.2 | Asignación automática en base a un archivo de texto | 1d | 2010-07-01 | 2010-07-01 |  | 23d |  |
| 123 | 29.5 | Publicar Encuestas | 1d | 2010-07-01 | 2010-07-01 |  | 23d |  |
| 124 | 30 | **(ADM09) Mantenimiento de seguimiento de patologias** | 1d | 2010-07-26 | 2010-07-26 | 79 | 4d | 1d |
| 125 | 30.1 | Mantenimiento Indice de campañas de seguimiento | 1d | 2010-07-26 | 2010-07-26 |  | 4d |  |
| 126 | 30.2 | Asignación de formulario a campaña de seguimiento | 0.5d | 2010-07-26 | 2010-07-26 |  | 4.5d |  |
| 127 | 30.3 | Asignación de operadores a campaña de seguimiento | 0.5d | 2010-07-26 | 2010-07-26 |  | 4.5d |  |
| 128 | 30.4 | Asignación de listas de pacientes | 0.5d | 2010-07-26 | 2010-07-26 |  | 4.5d |  |
| 129 | 30.5 | Activación/ Desactivación de campañas | 0.5d | 2010-07-26 | 2010-07-26 |  | 4.5d |  |
| 130 | 31 | **(ADM10) Creacion de formularios de encuesta y seguimiento** | 1d | 2010-06-30 | 2010-06-30 | 200 | 19d | 0d |
| 131 | 31.1 | Mantener Indice de Encuesta | 1d | 2010-06-30 | 2010-06-30 |  | 19d |  |
| 132 | 31.2 | Crear y Editar Encuestas | 1d | 2010-06-30 | 2010-06-30 |  | 19d |  |
| 133 | 32 | **(ADM11) Mantenimiento de usuarios, perfiles y permisos** | 1d | 2010-07-07 | 2010-07-07 | 1 | 2d | 0d |
| 134 | 32.1 | Mantenimiento Opciones Funcionales | 1d | 2010-07-07 | 2010-07-07 |  | 2d |  |

| ID | WBS | Task | Duration | Start | Finish | Predecessors | Total slack |
| --- | --- | --- | --- | --- | --- | --- | --- |
| 135 | 32.2 | **Mantener Perfiles Trabajo** | 1d | 2010-07-07 | 2010-07-07 |  | 2d |
| 136 | 32.2.1 | Alta, modificación de perfiles | 1d | 2010-07-07 | 2010-07-07 |  | 2d |
| 137 | 32.2.2 | ABM de opciones funcionales a perfil | 1d | 2010-07-07 | 2010-07-07 |  | 2d |
| 138 | 32.2.3 | Adición de responsabilidades a opciones funcionales | 0.5d | 2010-07-07 | 2010-07-07 |  | 2.5d |
| 139 | 32.3 | **Mantener Usuarios** | 1d | 2010-07-07 | 2010-07-07 |  | 2d |
| 140 | 32.3.1 | Creación/gestion de usuarios | 1d | 2010-07-07 | 2010-07-07 |  | 2d |
| 141 | 32.3.2 | Asiganción de perfil a usuario | 0.5d | 2010-07-07 | 2010-07-07 |  | 2.5d |
| 142 | 32.3.3 | Asignación de agendas a usuario | 1d | 2010-07-07 | 2010-07-07 |  | 2d |
| 143 | 33 | **(ADM12) Listado de acciones proactivas** | 2d | 2010-07-28 | 2010-07-29 | 95, 124 | 3d |
| 144 | 33.1 | Módulo de elaboraciónde informes de estado de campaña de seguimiento | 2d | 2010-07-28 | 2010-07-29 |  | 3d |
| 145 | 33.2 | Módulo de elaboración de informes de estado de encuesta | 2d | 2010-07-28 | 2010-07-29 |  | 3d |
| 146 | 33.3 | Módulo de elaboración de informes de ediciones de encuestas | 2d | 2010-07-28 | 2010-07-29 |  | 3d |
| 147 | 33.4 | Módulo de elaboración de listados de campañas de seguimiento | 2d | 2010-07-28 | 2010-07-29 |  | 3d |
| 148 | 33.5 | Módulo de elaboración de listados de información de encuestas | 2d | 2010-07-28 | 2010-07-29 |  | 3d |
| 149 | 34 | **(ADM13) Listados de documentos** | 1d | 2010-07-28 | 2010-07-28 | 95, 103 | 4d |
| 150 | 34.1 | Elaboración de listado de configuración | 1d | 2010-07-28 | 2010-07-28 |  | 4d |
| 151 | 34.2 | Elaboración de listado de uso | 1d | 2010-07-28 | 2010-07-28 |  | 4d |
| 152 | 34.3 | Elaboración de listado de asociaciones | 1d | 2010-07-28 | 2010-07-28 |  | 4d |
| 153 | 35 | **(ADM14) Listado sobre consultas** | 1d | 2010-07-28 | 2010-07-28 | 95, 23 | 4d |
| 154 | 35.1 | Módulo de obtención de listados de consulta por ciudadano | 1d | 2010-07-28 | 2010-07-28 |  | 4d |
| 155 | 35.2 | Módulo de obtención de listados de consultas con cierre principal | 1d | 2010-07-28 | 2010-07-28 |  | 4d |
| 156 | 35.3 | Módulo de obtención de listados de consulta con cierre secundario | 1d | 2010-07-28 | 2010-07-28 |  | 4d |
| 157 | 35.4 | Módulo de obtención de listados de consulta por motivo de cierre | 1d | 2010-07-28 | 2010-07-28 |  | 4d |
| 158 | 35.5 | Módulo de obtención de listado de resumen de consultas por servicio | 1d | 2010-07-28 | 2010-07-28 |  | 4d |
| 159 | 35.6 | Módulo de obtención de listado de consultas por área geográfica | 1d | 2010-07-28 | 2010-07-28 |  | 4d |
| 160 | 35.7 | Módulo de obtención de listado de consultas por usuario | 1d | 2010-07-28 | 2010-07-28 |  | 4d |
| 161 | 35.8 | Módulo de obtención de listado de consultas pendientes | 1d | 2010-07-28 | 2010-07-28 |  | 4d |

| ID | WBS | Task | Duration | Start | Finish | Predecessors | Total slack | Free slack | Resources | Work | Cost |
| --- | --- | --- | --- | --- | --- | --- | --- | --- | --- | --- | --- |
| 162 | 36 | **(ADM15) Mantener Asignaciones TSI** | 5d | 2010-07-26 | 2010-07-30 | 79, 35 | 2d |  |  |  |  |
| 163 | 36.1 | **Módulo de envío de datos a CatSalut** | 5d | 2010-07-26 | 2010-07-30 |  | 2d |  |  |  |  |
| 164 | 36.1.1 | Recolección de datos de operaciones TSI pendientes | 1d | 2010-07-26 | 2010-07-26 |  | 6d |  |  |  |  |
| 165 | 36.1.2 | Migración de los datos a archivo TXT | 2d | 2010-07-26 | 2010-07-27 |  | 5d |  |  |  |  |
| 166 | 36.1.3 | Interface de comunicación con CatSalut | 5d | 2010-07-26 | 2010-07-30 |  | 2d |  |  |  |  |
| 167 | 37 | **(ADM16) Asignar documentos a acciones** | 1d | 2010-07-22 | 2010-07-22 | 103 | 8d |  |  |  |  |
| 168 | 37.1 | Creación/eliminación de asociaciones | 1d | 2010-07-22 | 2010-07-22 |  | 8d |  |  |  |  |
| 169 | 37.2 | Cadicidad de asociaciones | 1d | 2010-07-22 | 2010-07-22 |  | 8d |  |  |  |  |
| 170 | 38 | **(INT01) Direcciones de farmacias, CAP y otra informacion breve** | 2d | 2010-07-26 | 2010-07-27 | 11, 61, 79 | 0d |  |  |  |  |
| 171 | 38.1 | Trabajo con listas de resultados | 2d | 2010-07-26 | 2010-07-27 |  | 0d |  |  |  |  |
| 172 | 39 | **(SIS01) Trazabilidad y registro de uso** | 10d | 2010-07-07 | 2010-07-20 | 1 | 10d |  | Programador Sr 1; Programador Sr 2 | 368h | 11,500 |
| 173 | 39.1 | Control Acceso a Consultas | 2d | 2010-07-12 | 2010-07-15 | 23 | 13d |  | Programador Sr 1; Programador Sr 2 | 32h | 1,000 |
| 174 | 39.2 | Control Acceso a Encuestas | 2d | 2010-07-07 | 2010-07-08 | 52 | 18d |  | Programador Sr 1; Programador Sr 2 | 32h | 1,000 |
| 175 | 39.3 | Control General Acceso al Sistema | 2d | 2010-07-08 | 2010-07-09 | 133 | 17d |  | Programador Sr 1; Programador Sr 2 | 32h | 1,000 |
| 176 | 39.4 | Control Acceso a Campañas de Seguimiento | 2d | 2010-07-19 | 2010-07-20 | 46 | 10d |  | Programador Sr 1; Programador Sr 2 | 32h | 1,000 |
| 177 | 39.5 | Control Acceso a Documentos | 2d | 2010-07-13 | 2010-07-14 | 61 | 14d |  | Programador Sr 1; Programador Sr 2 | 32h | 1,000 |
| 178 | 39.6 | Control Acceso a Recursos Internos | 2d | 2010-07-07 | 2010-07-08 |  | 18d |  | Programador Sr 1; Programador Sr 2 | 32h | 1,000 |
| 179 | 39.7 | Historial de Consultas | 1d | 2010-07-07 | 2010-07-07 |  | 19d |  | Programador Sr 1; Programador Sr 2 | 16h | 500 |
| 180 | 40 | **(ISC01) Transferir info, comunicacion a STARS** | 5d | 2010-07-19 | 2010-07-23 | 1 | 7d |  | Programador Sr 1; Programador Sr 2 | 128h | 4,000 |
| 181 | 40.1 | Recibir información del sistema de comunicaciones | 3d | 2010-07-19 | 2010-07-23 |  | 7d |  | Programador Sr 1; Programador Sr 2 | 48h | 1,500 |
| 182 | 41 | **(ISC02) Iniciar llamada desde STARS** | 3d | 2010-07-26 | 2010-07-28 | 1 | 4d |  | Programador Sr 1; Programador Sr 2 | 96h | 3,000 |
| 183 | 41.1 | Lanzamiento de petición de comunicación | 3d | 2010-07-26 | 2010-07-28 |  | 4d |  | Programador Sr 1; Programador Sr 2 | 48h | 1,500 |
| 184 | 42 | **(ISC03) Informacion encuesta** | 1d | 2010-07-01 | 2010-07-01 | 130 | 23d |  |  |  |  |
| 185 | 42.1 | Activación actividad de encuesta | 1d | 2010-07-01 | 2010-07-01 |  | 23d |  |  |  |  |
| 186 | 43 | ABM Consultas | 1d | 2010-07-23 | 2010-07-23 | 23 | 7d |  | Programador Jr 1; Programador Jr 2 | 16h | 300 |
| 187 | 44 | ABM Usuarios | 1d | 2010-07-12 | 2010-07-12 | 3 | 13d | 0d | Programador Jr 1; Programador Jr 2 | 16h | 300 |
| 188 | 45 | Proteccion de Acceso | 3d | 2010-07-13 | 2010-07-15 | 187 | 13d |  | Programador Sr 1; Programador Sr 2 | 48h | 1,500 |
| 189 | 46 | ABM Fichas / Guias / Recursos | 3d | 2010-07-15 | 2010-07-19 | 108 | 11d |  | Programador Jr 1; Programador Jr 2 | 48h | 900 |
| 190 | 47 | ABM Cuestionarios | 1d | 2010-07-01 | 2010-07-01 | 130 | 23d |  | Programador Jr 1; Programador Jr 2 | 16h | 300 |
| 191 | 48 | Interfaz General | 10d | 2010-07-07 | 2010-07-20 | 1 | 10d |  |  |  |  |
| 192 | 49 | Interfaz Para Usuario Avanzado | 5d | 2010-07-26 | 2010-07-30 | 79 | 2d |  |  |  |  |
| 193 | 50 | Interfaz de Listados para ADM02 | 5d | 2010-07-28 | 2010-08-03 | 95 | 0d |  |  |  |  |
| 194 | 51 | Interfaz Mantenimiento Usuarios y Perfiles | 5d | 2010-07-08 | 2010-07-14 | 133 | 14d |  |  |  |  |
| 195 | 52 | Interfaz Direcciones INT01 | 5d | 2010-07-28 | 2010-08-03 | 170 | 0d |  |  |  |  |
| 196 | 53 | ABM Enfermedades / Centros Salud | 2d | 2010-07-28 | 2010-07-29 | 170 | 3d |  | Programador Jr 1; Programador Jr 2 | 32h | 600 |
| 197 | 54 | Listado de Usuarios y Perfiles | 1d | 2010-08-02 | 2010-08-02 | 133 | 1d |  | Programador Jr 1; Programador Jr 2 | 16h | 300 |
| 198 | 55 | Interface con sistema de comunicaciones (ISC01, ISC02, ISC03) | 5d | 2010-07-07 | 2010-07-13 | 1 | 15d |  | Programador Sr 1; Programador Sr 2 | 80h | 2,500 |
| 200 | 56 | Arquitectura General / Configuracion Ambientes | 15d | 2010-06-09 | 2010-06-29 | 201 | 0d |  | Arquitecto | 120h | 5,250 |

| ID | WBS | Task | Duration | Start | Finish | Predecessors | Total slack | Free slack | Constraint | Resources | Work | Cost |
| --- | --- | --- | --- | --- | --- | --- | --- | --- | --- | --- | --- | --- |
| 201 | 57 | **Tareas IT Sobre Nuestra Empresa** | 24d | 2010-05-06 | 2010-06-08 |  | 2d | 0d |  | IT 1 | 464h | 11,200 |
| 202 | 57.1 | Compra Equipos Necesarios | 1.5d | 2010-05-06 | 2010-05-07 |  | 25d |  | start no earlier than 2010-05-06 | Programador Jr 1; Programador Jr 2 | 24h | 450 |
| 203 | 57.2 | **Infraestructura** | 6d | 2010-05-10 | 2010-05-17 |  |  |  |  | IT 1 | 120h | 3,000 |
| 204 | 57.2.1 | Preparacion de Ambientes en servidores | 1d | 2010-05-17 | 2010-05-17 |  | 0d |  |  | IT 1 | 8h | 200 |
| 205 | 57.2.2 | Instalacion y Configuracion de Servidor DEV | 3d | 2010-05-11 | 2010-05-14 |  | 1d |  |  | IT 1 | 24h | 600 |
| 206 | 57.2.3 | Instalacion y Configuracion de Servidores de Usos Multiples | 5d | 2010-05-13 | 2010-05-24 |  | -5d | 0d |  | IT 1 | 40h | 1,000 |
| 207 | 57.3 | **Redes** | 8d | 2010-05-25 | 2010-06-03 | 203 |  |  |  | IT 1 | 88h | 2,200 |
| 208 | 57.3.1 | Configuracion del FW | 3d | 2010-06-04 | 2010-06-08 |  | 40d |  | start no earlier than 2010-06-04 | IT 1 | 24h | 600 |
| 209 | 57.4 | Instalacion de pcs nuevos usuarios | 2.5d | 2010-05-07 | 2010-05-11 | 202 | 20d |  | start no earlier than 2010-05-07 | Programador Jr 1; Programador Jr 2 | 40h | 750 |
